# BLUEsatProjectPlan

Schedule from MS Project, 2012-01-14 to 2013-02-28, scheduled back from the finish, 24 hours a day.

## Calendars

- 24 Hours: Mon-Sun 00:00-24:00.

## Resources

| Resource | Group |
| --- | --- |
| Pooface | Sanitation |
| Assface |  |

## Schedule

| ID | WBS | Task | Type | Duration | Start | Finish | Total slack | Free slack | Constraint |
| --- | --- | --- | --- | --- | --- | --- | --- | --- | --- |
| 1 | 1 | **Documentation** |  | 411.38d | 2012-01-14 | 2013-02-28 |  |  | as late as possible |
| 2 | 1.1 | <New Task> | manual | 0.33d | 2013-02-28 | 2013-02-28 |  |  |  |
| 3 | 2 | **Design, Testing and Analysis** |  | 30w | 2012-01-14 | 2012-08-11 |  |  | as late as possible |
| 4 | 2.1 | <New Task> | manual | 1d | 2012-08-10 | 2012-08-11 |  |  |  |
| 5 | 2.2 | **Integration Rig (Flatsat)** |  | 41.38d | 2012-01-14 | 2012-02-24 |  |  | as late as possible |
| 6 | 2.2.1 | <New Task> | manual | 0.33d | 2012-02-24 | 2012-02-24 |  |  |  |
| 7 | 2.3 | **Feasbility Investigation** |  | 3w | 2012-07-21 | 2012-08-11 |  |  | as late as possible |
| 8 | 2.3.1 | <New Task> | manual | 1d | 2012-08-10 | 2012-08-11 |  |  |  |
| 9 | 2.4 | **Design Finalisation** |  | 3w | 2012-07-21 | 2012-08-11 |  |  | as late as possible |
| 10 | 2.4.1 | <New Task> | manual | 1d | 2012-08-10 | 2012-08-11 |  |  |  |
| 11 | 2.5 | Testing and Evaluation | manual | 3w | 2012-07-21 | 2012-08-11 |  |  | as late as possible |
| 13 | 2.6 | **Simulation** |  | 3w | 2012-07-21 | 2012-08-11 |  |  | as late as possible |
| 14 | 2.6.1 | Critical Design Review |  | 1w | 2012-08-04 | 2012-08-11 | 14d | 0d | as late as possible |
| 15 | 3 | **Production** |  | 12w | 2012-08-18 | 2012-11-10 |  |  | as late as possible |
| 16 | 3.1 | <New Task> | manual | 1d | 2012-11-09 | 2012-11-10 |  |  |  |
| 17 | 4 | **Qualification testing** |  | 15w | 2012-11-15 | 2013-02-28 |  |  | as late as possible |
| 18 | 4.1 | Christmas | manual | 3w | 2012-12-16 | 2013-01-06 |  |  |  |
| 19 | 5 | **Delivery and Launch** |  | 3.77w | 2013-02-02 | 2013-02-28 |  |  | as late as possible |
| 20 | 5.1 | <New Task> | manual | 1d | 2013-02-27 | 2013-02-28 |  |  | as late as possible |
